# 瓮福项目SCM实施主计划

Schedule from MS Project, 2010-08-12 to 2011-02-22.
ufida

## Calendars

- 标准: Mon-Fri 08:00-12:00, 13:00-17:00; Sat-Sun off. Exceptions (off unless hours are given): 2010-09-11 08:00-12:00, 13:00-17:00.

## Resources

| Resource |
| --- |
| 用友项目经理 |
| 用友财务顾问 |
| 用友供应链顾问 |
| 用友BI顾问 |
| 用友测试顾问甲 |
| 用友测试顾问乙 |
| 用友测试顾问丙 |
| 用友项目经理" |
| 用友技术顾问 |
| 瓮福项目关键用户 |
| 用友硬件技术顾问 |
| 瓮福项目经理 |
| 瓮福项目硬件技术顾问 |
| 瓮福项目总监 |
| 瓮福项目关键用户 |
| 瓮福项目组 |
| 用友项目组 |
| 瓮福方各管理层 |
| 关键用户 |
| 最终用户 |
| 瓮福供应链 |
| 瓮福供应链组 |
| 用友供应链组 |
| 瓮福方系统管理员 |

## Schedule

| ID | WBS | Task | Duration | Start | Finish | Total slack | Constraint | Resources | Work |
| --- | --- | --- | --- | --- | --- | --- | --- | --- | --- |
| 1 | 1 | **瓮福集团项目用友NC-ERP项目第一期实施计划** | 140d | 2010-08-12 | 2011-02-22 | 0d |  |  | 10328h |
| 2 | 1.1 | **第一阶段：整体规划，分步实施，试点实现管理信息化** | 140d | 2010-08-12 | 2011-02-22 | 0d | start no earlier than 2010-08-01 |  | 10328h |
| 3 | 1.1.1 | **实施准备** | 6d | 2010-08-12 | 2010-08-19 | 134d | start no earlier than 2010-08-12 |  | 72h |
| 4 | 1.1.1.1 | 组织项目团队，明确责任 | 2d | 2010-08-12 | 2010-08-13 | 138d | start no earlier than 2010-08-09 | 用友项目经理 | 16h |
| 5 | 1.1.1.2 | 明确项目一期目标和范围 | 2d | 2010-08-13 | 2010-08-16 | 137d | start no earlier than 2010-08-13 | 用友项目经理 | 16h |
| 6 | 1.1.1.3 | 制定实施工作规范 | 1d | 2010-08-12 | 2010-08-12 | 139d | start no earlier than 2009-09-25 | 用友项目经理 | 8h |
| 7 | 1.1.1.4 | 项目启动会准备 | 1d | 2010-08-16 | 2010-08-16 | 137d | start no earlier than 2010-08-16 | 用友项目经理 | 8h |
| 8 | 1.1.1.5 | 项目启动会 | 1d | 2010-08-19 | 2010-08-19 | 134d | start no earlier than 2010-08-19 | 用友项目经理; 用友财务顾问; 用友供应链顾问 | 24h |
| 9 | 1.1.2 | **蓝图设计** | 52d | 2010-08-20 | 2010-10-29 | 82d | start no earlier than 2010-08-20 |  | 1832h |
| 10 | 1.1.2.1 | **供应链业务调研** | 24d | 2010-08-20 | 2010-09-21 | 110d |  |  | 344h |
| 11 | 1.1.2.1.1 | 实施团队进场并提交调研计划 | 1d | 2010-08-20 | 2010-08-20 | 133d | start no earlier than 2010-08-20 | 用友供应链顾问 | 8h |
| 12 | 1.1.2.1.2 | 销售公司实施调研 | 6d | 2010-08-23 | 2010-08-30 | 127d | start no earlier than 2010-08-23 | 用友供应链顾问 | 48h |
| 13 | 1.1.2.1.3 | 供应公司实施调研 | 6d | 2010-08-26 | 2010-09-02 | 124d | start no earlier than 2010-08-26 | 用友供应链顾问 | 48h |
| 14 | 1.1.2.1.4 | 供应与销售公司调研小结 | 2d | 2010-09-01 | 2010-09-02 | 124d | start no earlier than 2010-09-01 | 瓮福项目关键用户; 用友供应链顾问 | 32h |
| 15 | 1.1.2.1.5 | 磷矿公司实施调研 | 3d | 2010-09-06 | 2010-09-08 | 120d | start no earlier than 2010-09-06 | 用友供应链顾问; 瓮福项目关键用户 | 48h |
| 16 | 1.1.2.1.6 | 磷肥公司实施调研 | 3d | 2010-09-10 | 2010-09-13 | 116d | finish no earlier than 2010-09-13 | 瓮福项目关键用户; 用友供应链顾问 | 48h |
| 17 | 1.1.2.1.7 | 磷业公司实施调研 | 3d | 2010-09-14 | 2010-09-16 | 113d | start no earlier than 2010-09-14 | 瓮福项目关键用户; 用友供应链顾问 | 48h |
| 18 | 1.1.2.1.8 | 专用铁路管理站实施调研 | 1d | 2010-09-17 | 2010-09-17 | 112d | start no earlier than 2010-09-17 | 瓮福项目关键用户; 用友供应链顾问 | 16h |
| 19 | 1.1.2.1.9 | 瓮福集团主要领导访谈 | 2d | 2010-09-20 | 2010-09-21 | 110d | start no earlier than 2010-09-20 | 用友财务顾问; 用友供应链顾问; 用友项目经理 | 48h |
| 20 | 1.1.2.2 | **相关资料收集** | 10d | 2010-08-20 | 2010-09-02 | 124d |  | 用友供应链顾问 | 800h |
| 21 | 1.1.2.2.1 | 收集管理需求 | 10d | 2010-08-20 | 2010-09-02 | 124d |  | 瓮福方各管理层; 关键用户; 最终用户 | 240h |
| 22 | 1.1.2.2.2 | 收集各项管理制度及流程 | 10d | 2010-08-20 | 2010-09-02 | 124d |  | 瓮福方各管理层; 关键用户; 最终用户 | 240h |
| 23 | 1.1.2.2.3 | 收集管理报表及综合报表 | 10d | 2010-08-20 | 2010-09-02 | 124d |  | 瓮福方各管理层; 关键用户; 最终用户 | 240h |
| 24 | 1.1.2.3 | **供应链业务调研报告** | 13d | 2010-09-24 | 2010-10-12 | 95d |  |  | 192h |
| 25 | 1.1.2.3.1 | 调研文档整理编写调研报告 | 3d | 2010-09-24 | 2010-09-28 | 105d | start no earlier than 2010-09-24 | 用友供应链顾问; 用友项目经理 | 48h |
| 26 | 1.1.2.3.2 | 调研报告初稿与关键用户沟通 | 3d | 2010-09-27 | 2010-09-29 | 104d | finish no earlier than 2010-09-29 | 瓮福项目经理; 瓮福项目关键用户; 用友供应链顾问; 用友项目经理 | 96h |
| 27 | 1.1.2.3.3 | 确认《瓮福集团项目供应链调研报告》 | 3d | 2010-10-08 | 2010-10-12 | 95d | start no earlier than 2010-10-08 | 瓮福供应链组; 用友供应链组 | 48h |

| ID | WBS | Task | Duration | Start | Finish | Total slack | Constraint | Resources | Work |
| --- | --- | --- | --- | --- | --- | --- | --- | --- | --- |
| 28 | 1.1.2.4 | **供应链解决方案** | 16d | 2010-10-08 | 2010-10-29 | 82d |  |  | 496h |
| 29 | 1.1.2.4.1 | 供应链产品理念培训 | 1d | 2010-10-08 | 2010-10-08 | 97d | start no earlier than 2010-10-08 | 瓮福项目关键用户; 用友供应链顾问 | 16h |
| 30 | 1.1.2.4.2 | 统计报表内容分析 | 2d | 2010-10-08 | 2010-10-11 | 96d | start no earlier than 2010-10-08 | 用友供应链顾问; 用友项目经理; 瓮福项目关键用户 | 48h |
| 31 | 1.1.2.4.3 | 业务流程优化分析 | 2d | 2010-10-11 | 2010-10-12 | 95d | start no earlier than 2010-10-11 | 瓮福项目关键用户; 瓮福项目经理; 用友财务顾问; 用友供应链顾问; 用友项目经理" | 80h |
| 32 | 1.1.2.4.4 | 财务与供应链业务协同讨论 | 2d | 2010-10-13 | 2010-10-14 | 93d | start no earlier than 2010-10-13 | 用友财务顾问; 用友供应链顾问 | 32h |
| 33 | 1.1.2.4.5 | 基于《调研报告》需求标准业务方案 | 4d | 2010-10-18 | 2010-10-21 | 88d | start no earlier than 2010-10-18 | 用友财务顾问; 用友供应链顾问 | 64h |
| 34 | 1.1.2.4.6 | 《用友NC-ERP供应链解决方案》初稿与关键用户的交流 | 1.6d | 2010-10-21 | 2010-10-22 | 87.4d | start no earlier than 2010-10-21 | 瓮福项目经理; 用友财务顾问; 用友供应链顾问; 用友项目经理; 瓮福项目关键用户 | 64h |
| 35 | 1.1.2.4.7 | 业务需求(包含报表)分析与开发方案编写 | 3d | 2010-10-19 | 2010-10-21 | 88d | start no earlier than 2010-10-19 | 用友供应链顾问; 瓮福项目关键用户 | 48h |
| 36 | 1.1.2.4.8 | 提交《用友NC-ERP供应链解决方案》《二次开发方案》初稿 | 1d | 2010-10-25 | 2010-10-25 | 86d | start no earlier than 2010-10-25 | 用友项目经理; 用友财务顾问; 用友供应链顾问 | 24h |
| 37 | 1.1.2.4.9 | 确认《用友NC-ERP供应链方案1.0》初稿 | 3d | 2010-10-27 | 2010-10-29 | 82d | start no earlier than 2010-10-27 | 用友项目经理; 用友财务顾问; 用友供应链顾问 | 72h |
| 38 | 1.1.2.4.10 | 确认《瓮福集团ERP项目供应链二次开发需求》 | 2d | 2010-10-28 | 2010-10-29 | 82d | start no earlier than 2010-10-28 | 用友项目经理; 用友财务顾问; 用友供应链顾问 | 48h |
| 39 | 1.1.3 | **系统建设** | 62d | 2010-09-16 | 2010-12-10 | 52d | start no earlier than 2009-09-16 |  | 4616h |
| 40 | 1.1.3.1 | **供应链与相关业务基础数据** | 57d | 2010-09-16 | 2010-12-03 | 57d |  |  | 728h |
| 41 | 1.1.3.1.1 | 确定瓮福编码小组及编码范围 | 1d | 2010-09-16 | 2010-09-16 | 113d | start no earlier than 2010-09-16 | 瓮福项目关键用户; 瓮福项目经理; 用友供应链顾问 | 24h |
| 42 | 1.1.3.1.2 | 根据小组分工提交原始数据 | 3d | 2010-09-17 | 2010-09-21 | 110d | start no earlier than 2010-09-17 | 瓮福项目关键用户 | 24h |
| 43 | 1.1.3.1.3 | 基础数据编码讨论并编写规则 | 15d | 2010-09-21 | 2010-10-11 | 96d | start no earlier than 2010-09-21 | 用友项目经理; 用友财务顾问; 用友供应链顾问 | 360h |
| 44 | 1.1.3.1.4 | 根据规则整理基础资料并完成 | 40d | 2010-10-11 | 2010-12-03 | 57d | start no earlier than 2010-10-11 | 瓮福项目关键用户 | 320h |
| 45 | 1.1.3.2 | **产品交付并安装** | 8d | 2010-10-11 | 2010-10-20 | 89d |  | 用友硬件技术顾问 | 248h |
| 46 | 1.1.3.2.1 | **系统环境准备** | 7d | 2010-10-11 | 2010-10-19 | 90d |  | 用友硬件技术顾问 | 168h |
| 47 | 1.1.3.2.1.1 | 准备系统环境 | 3d | 2010-10-11 | 2010-10-13 | 94d | start no earlier than 2010-10-11 | 用友硬件技术顾问; 瓮福方系统管理员 | 48h |
| 48 | 1.1.3.2.1.2 | 系统环境检查和测试 | 4d | 2010-10-14 | 2010-10-19 | 90d | start no earlier than 2010-10-14 | 用友硬件技术顾问; 瓮福方系统管理员 | 64h |
| 49 | 1.1.3.2.2 | 正式产品环境安装确认 | 1d | 2010-10-20 | 2010-10-20 | 89d | start no earlier than 2010-10-20 | 用友硬件技术顾问; 瓮福方系统管理员 | 16h |
| 50 | 1.1.3.3 | 瓮福供应链应用人员权限规划方案 | 10d | 2010-10-25 | 2010-11-05 | 77d | start no earlier than 2010-10-25 | 瓮福项目关键用户 | 80h |
| 51 | 1.1.3.4 | **培训（测试）环境搭建** | 6d | 2010-11-01 | 2010-11-08 | 76d |  | 用友供应链顾问; 用友财务顾问 | 160h |
| 52 | 1.1.3.4.1 | 硬件及网络准备 | 2d | 2010-11-01 | 2010-11-02 | 80d | start no earlier than 2010-11-01 | 用友供应链顾问; 用友财务顾问 | 32h |
| 53 | 1.1.3.4.2 | 软件安装与初始化 | 1d | 2010-11-05 | 2010-11-05 | 77d | start no earlier than 2010-11-05 | 用友供应链顾问; 用友财务顾问 | 16h |
| 54 | 1.1.3.4.3 | 培训环境搭建(档案、权限、流程) | 1d | 2010-11-08 | 2010-11-08 | 76d | start no earlier than 2010-11-08 | 用友供应链顾问; 用友财务顾问 | 16h |

| ID | WBS | Task | Duration | Start | Finish | Predecessors | Total slack | Free slack | Constraint | Resources | Work |
| --- | --- | --- | --- | --- | --- | --- | --- | --- | --- | --- | --- |
| 55 | 1.1.3.5 | **项目组关键用户培训** | 6d | 2010-11-05 | 2010-11-12 |  | 72d |  |  | 瓮福项目关键用户; 用友财务顾问; 用友供应链顾问 | 288h |
| 56 | 1.1.3.5.1 | 关键用户培训通知 | 1d | 2010-11-05 | 2010-11-05 |  | 77d |  | start no earlier than 2010-11-05 | 瓮福项目关键用户; 用友财务顾问; 用友供应链顾问 | 24h |
| 57 | 1.1.3.5.2 | 产品应用培训 | 4d | 2010-11-08 | 2010-11-11 |  | 73d |  | start no earlier than 2010-11-08 | 瓮福项目关键用户; 用友财务顾问; 用友供应链顾问 | 96h |
| 58 | 1.1.3.5.3 | 培训考核 | 1d | 2010-11-12 | 2010-11-12 |  | 72d |  | start no earlier than 2010-11-12 | 瓮福项目关键用户; 用友财务顾问; 用友供应链顾问 | 24h |
| 59 | 1.1.3.6 | **供应链业务方案测试(含财务接口)** | 5d | 2010-11-15 | 2010-11-19 |  | 67d |  |  | 瓮福项目关键用户; 用友财务顾问; 用友供应链顾问 | 840h |
| 60 | 1.1.3.6.1 | 供应公司业务单元测试 | 5d | 2010-11-15 | 2010-11-19 |  | 67d |  | finish no earlier than 2010-11-19 | 用友供应链顾问; 用友财务顾问; 瓮福项目关键用户 | 120h |
| 61 | 1.1.3.6.2 | 销售公司业务单元测试 | 5d | 2010-11-15 | 2010-11-19 |  | 67d |  | finish no earlier than 2010-11-19 | 用友供应链顾问; 用友财务顾问; 瓮福项目关键用户 | 120h |
| 62 | 1.1.3.6.3 | 磷矿公司业务单元测试 | 5d | 2010-11-15 | 2010-11-19 |  | 67d |  | finish no earlier than 2010-11-19 | 用友供应链顾问; 瓮福项目关键用户; 用友财务顾问 | 120h |
| 63 | 1.1.3.6.4 | 磷肥公司业务单元测试 | 5d | 2010-11-15 | 2010-11-19 |  | 67d |  | start no earlier than 2010-11-15 | 用友供应链顾问; 瓮福项目关键用户; 用友财务顾问 | 120h |
| 64 | 1.1.3.6.5 | 磷业公司业务单元测试 | 5d | 2010-11-15 | 2010-11-19 |  | 67d |  | finish no earlier than 2010-11-19 | 用友供应链顾问; 瓮福项目关键用户; 用友财务顾问 | 120h |
| 65 | 1.1.3.6.6 | 专用铁路管理站业务单元测试 | 5d | 2010-11-15 | 2010-11-19 |  | 67d |  | finish no earlier than 2010-11-19 | 用友供应链顾问; 瓮福项目关键用户; 用友财务顾问 | 120h |
| 66 | 1.1.3.6.7 | 财务与供应链集成测试 | 2d | 2010-11-18 | 2010-11-19 |  | 67d |  | start no earlier than 2010-11-18 |  |  |
| 67 | 1.1.3.7 | 测试报告分析与问题解决 | 6d | 2010-11-18 | 2010-11-25 |  | 63d |  | start no earlier than 2010-11-18 | 瓮福项目关键用户; 用友供应链顾问 | 96h |
| 68 | 1.1.3.8 | 确认《NC-ERP供应链方案》测试报告(含财务) | 2d | 2010-11-22 | 2010-11-23 |  | 65d |  | start no earlier than 2010-11-22 | 用友供应链顾问; 用友项目经理; 用友财务顾问 | 48h |
| 69 | 1.1.3.9 | 确认《NC-ERP供应链方案》终稿 | 1d | 2010-11-22 | 2010-11-22 |  | 66d |  | start no earlier than 2010-11-22 | 瓮福项目经理; 用友项目经理 | 16h |
| 70 | 1.1.3.10 | 编写《NC-ERP客户化操作手册》(含财务) | 10d | 2010-11-23 | 2010-12-06 |  | 56d |  | start no earlier than 2010-11-23 | 瓮福项目关键用户; 瓮福项目经理; 用友财务顾问; 用友供应链顾问 | 320h |
| 71 | 1.1.3.11 | 二次开发工作任务 | 30d | 2010-11-01 | 2010-12-10 |  | 52d |  | start no earlier than 2010-11-01 | 用友技术顾问; 用友供应链顾问 | 480h |
| 72 | 1.1.3.12 | 瓮福供应链NC-ERP系统整体完善 | 41d | 2010-10-11 | 2010-12-06 |  | 56d |  | start no earlier than 2010-10-11 | 用友项目经理; 用友财务顾问; 用友供应链顾问; 瓮福项目关键用户 | 1312h |
| 73 | 1.1.4 | **上线切换** | 42d | 2010-11-22 | 2011-01-18 |  | 25d |  | start no earlier than 2010-01-18 | 用友项目经理; 用友财务顾问; 用友供应链顾问; 瓮福项目关键用户 | 3008h |
| 74 | 1.1.4.1 | 建设系统环境和参数设置，准备上线帐套 | 5d | 2010-12-01 | 2010-12-07 |  | 55d |  | start no earlier than 2010-12-01 | 用友项目经理; 用友财务顾问; 用友供应链顾问 | 120h |
| 75 | 1.1.4.2 | 制订供应链运行管理制度 | 5d | 2010-12-07 | 2010-12-13 |  | 50d | 0d | start no earlier than 2010-12-07 | 用友项目经理; 用友财务顾问; 用友供应链顾问 | 120h |
| 76 | 1.1.4.3 | 制订内部支持体系 | 1d | 2010-12-14 | 2010-12-14 | 75 | 50d |  |  | 瓮福项目经理; 用友项目经理; 用友供应链顾问 | 24h |
| 77 | 1.1.4.4 | **供应链应用人员权限设置** | 10d | 2010-11-22 | 2010-12-03 |  | 57d |  |  | 瓮福项目经理; 用友项目经理; 用友供应链顾问 | 456h |
| 78 | 1.1.4.4.1 | 供应链系统用户梳理 | 4d | 2010-11-22 | 2010-11-25 |  | 57d | 0d | start no earlier than 2010-11-22 | 瓮福项目经理; 用友项目经理; 用友供应链顾问 | 96h |
| 79 | 1.1.4.4.2 | 供应链用户权限对应 | 2d | 2010-11-26 | 2010-11-29 | 78 | 57d | 0d |  | 瓮福项目经理; 用友项目经理; 用友供应链顾问 | 48h |
| 80 | 1.1.4.4.3 | 供应链用户建立 | 1d | 2010-11-30 | 2010-11-30 | 79 | 57d | 0d |  | 瓮福项目经理; 用友项目经理; 用友供应链顾问 | 24h |
| 81 | 1.1.4.4.4 | 供应链用户权限分配 | 2d | 2010-12-01 | 2010-12-02 | 80 | 57d | 0d |  | 用友项目经理; 用友财务顾问; 用友供应链顾问 | 48h |
| 82 | 1.1.4.4.5 | 供应链用户权限验证并通过 | 1d | 2010-12-03 | 2010-12-03 | 81 | 57d |  |  |  |  |

| ID | WBS | Task | Duration | Start | Finish | Predecessors | Total slack | Free slack | Constraint | Resources | Work |
| --- | --- | --- | --- | --- | --- | --- | --- | --- | --- | --- | --- |
| 83 | 1.1.4.5 | **瓮福集团最终用户培训** | 25d | 2010-12-03 | 2011-01-06 |  | 33d |  |  | 用友供应链顾问; 瓮福项目关键用户 | 512h |
| 84 | 1.1.4.5.1 | 培训计划与人员通知 | 1d | 2010-12-03 | 2010-12-03 |  | 57d |  | start no earlier than 2010-12-03 | 用友供应链顾问; 瓮福项目关键用户 | 16h |
| 85 | 1.1.4.5.2 | 培训环境准备 | 2d | 2010-12-06 | 2010-12-07 |  | 55d |  | start no earlier than 2010-12-06 | 用友供应链顾问; 瓮福项目关键用户 | 32h |
| 86 | 1.1.4.5.3 | 一次操作培训 | 3d | 2010-12-08 | 2010-12-10 |  | 52d |  | start no earlier than 2010-12-08 | 用友供应链顾问; 瓮福项目关键用户 | 48h |
| 87 | 1.1.4.5.4 | 培训考核 | 1d | 2010-12-10 | 2010-12-10 |  | 52d |  | start no earlier than 2010-12-10 | 用友供应链顾问; 瓮福项目关键用户 | 16h |
| 88 | 1.1.4.5.5 | 二次集中培训 | 3d | 2011-01-04 | 2011-01-06 |  | 33d |  | start no earlier than 2011-01-04 |  |  |
| 89 | 1.1.4.6 | **系统上线前检查** | 5d | 2010-12-27 | 2010-12-31 |  | 37d |  |  | 瓮福项目关键用户; 用友财务顾问; 用友供应链顾问 | 192h |
| 90 | 1.1.4.6.1 | 系统配置检查 | 1d | 2010-12-27 | 2010-12-27 |  | 39d | 0d | start no earlier than 2010-12-27 | 瓮福项目关键用户; 用友财务顾问; 用友供应链顾问 | 24h |
| 91 | 1.1.4.6.2 | 用户权限检查 | 1d | 2010-12-28 | 2010-12-28 | 90 | 39d | 2d |  | 瓮福项目关键用户; 用友财务顾问; 用友供应链顾问 | 24h |
| 92 | 1.1.4.6.3 | 基础档案检查 | 1d | 2010-12-31 | 2010-12-31 | 91 | 37d |  | finish no earlier than 2010-12-31 | 瓮福项目关键用户; 用友财务顾问; 用友供应链顾问 | 24h |
| 93 | 1.1.4.7 | 瓮福集团用友NC-ERP上线动员会 | 1d | 2010-12-27 | 2010-12-27 |  | 41d |  | start no earlier than 2010-12-25 | 用友项目经理; 用友财务顾问; 用友供应链顾问; 瓮福项目总监; 瓮福项目经理; 瓮福项目关键用户 | 48h |
| 94 | 1.1.4.8 | 瓮福集团静态数据转换 | 4d | 2010-12-27 | 2010-12-30 |  | 38d |  | start no earlier than 2010-12-27 | 瓮福项目关键用户; 用友供应链顾问 | 64h |
| 95 | 1.1.4.9 | 期初数据录入 | 5d | 2011-01-10 | 2011-01-14 |  | 27d |  | start no earlier than 2011-01-10 | 用友供应链顾问; 瓮福项目关键用户 | 80h |
| 96 | 1.1.4.10 | 基础数据检查 | 2d | 2011-01-17 | 2011-01-18 |  | 25d |  | start no earlier than 2011-01-17 | 瓮福项目关键用户; 用友供应链顾问 | 32h |
| 97 | 1.1.4.11 | 系统正式切换 | 1d | 2011-01-18 | 2011-01-18 |  | 25d |  | start no earlier than 2011-01-18 | 瓮福项目关键用户; 用友供应链顾问 | 16h |
| 98 | 1.1.5 | **持续支持** | 26d | 2011-01-18 | 2011-02-22 |  | 0d |  | start no earlier than 2010-04-19 |  | 800h |
| 99 | 1.1.5.1 | **上线运行支持** | 19d | 2011-01-18 | 2011-02-11 |  | 7d |  |  | 用友财务顾问; 用友供应链顾问 | 576h |
| 100 | 1.1.5.1.1 | 第一个月日常操作 | 10d | 2011-01-18 | 2011-01-31 |  | 16d |  | start no earlier than 2011-01-18 | 瓮福项目关键用户; 用友供应链顾问 | 160h |
| 101 | 1.1.5.1.2 | 第一月结账 | 2d | 2011-02-04 | 2011-02-07 |  | 11d |  | start no earlier than 2011-02-04 | 瓮福项目关键用户; 用友供应链顾问 | 32h |
| 102 | 1.1.5.1.3 | 第一个月数据验证和总结 | 5d | 2011-02-07 | 2011-02-11 |  | 7d |  | start no earlier than 2011-02-07 | 瓮福项目关键用户; 用友供应链顾问 | 80h |
| 103 | 1.1.5.2 | 各单位系统使用情况检验 | 4d | 2011-02-14 | 2011-02-17 |  | 3d |  | start no earlier than 2011-02-14 | 瓮福项目关键用户; 用友供应链顾问 | 64h |
| 104 | 1.1.5.3 | 瓮福集团NC-ERP项目供应链总结 | 4d | 2011-02-14 | 2011-02-17 |  | 3d |  | start no earlier than 2011-02-14 | 用友财务顾问; 用友供应链顾问; 用友项目经理; 瓮福项目经理 | 128h |
| 105 | 1.1.5.4 | 项目验收 | 1d | 2011-02-16 | 2011-02-16 |  | 4d |  | start no earlier than 2011-02-16 | 瓮福项目组; 用友项目组 | 16h |
| 106 | 1.1.5.5 | 项目阶段验收会议 | 1d | 2011-02-22 | 2011-02-22 |  | 0d |  | start no earlier than 2011-02-22 | 瓮福项目组; 用友项目组 | 16h |
